# OSR civil fabrication and construction sequence

Schedule from an IFC model, 2026-01-05 to 2026-01-28.
OpenSourceRail civil coordination

## Schedule

| ID | Activity | Duration | Start | Finish | Predecessors |
| --- | --- | --- | --- | --- | --- |
| TRK-10 | Inspect and batch rails | 1d | 2026-01-05 | 2026-01-05 |  |
| TRK-20 | Cast alignment layer and plinth modules | 2d | 2026-01-06 | 2026-01-07 | TRK-10 |
| TRK-30 | Fit pads, baseplates and fasteners | 1d | 2026-01-08 | 2026-01-08 | TRK-20 |
| TRK-40 | Place rails and close panel geometry | 1d | 2026-01-09 | 2026-01-09 | TRK-30 |
| TRK-50 | Trackform, rail, fasteners, welds, and geometry | 4d | 2026-01-10 | 2026-01-13 | TRK-40 |
| STN-10 | Cast platform and foundation modules | 4d | 2026-01-05 | 2026-01-08 |  |
| STN-20 | Fabricate canopy portal frames | 3d | 2026-01-09 | 2026-01-11 | STN-10 |
| STN-30 | Build PV roof and MEP cassettes | 3d | 2026-01-12 | 2026-01-14 | STN-20 |
| STN-40 | Station foundations, platform, canopy, and access structure | 8d | 2026-01-15 | 2026-01-22 | STN-30 |
| STN-50 | Station MEP, passenger systems, fare, and safety fit-out | 6d | 2026-01-23 | 2026-01-28 | STN-40 |
| VIA-05 | Construct and test foundation, pier column and hollow cap | 13d | 2026-01-05 | 2026-01-17 |  |
| VIA-10 | Prepare Pi-beam mould, cage and tendons | 2d | 2026-01-18 | 2026-01-19 | VIA-05 |
| VIA-20 | Cast, cure and transfer prestress | 2d | 2026-01-20 | 2026-01-21 | VIA-10 |
| VIA-30 | Survey and first-article proof | 1d | 2026-01-22 | 2026-01-22 | VIA-20 |
| VIA-40 | Transport and certify erection system | 1d | 2026-01-23 | 2026-01-23 | VIA-30 |
| VIA-50 | Set bearings and erect two Pi-beams | 1d | 2026-01-24 | 2026-01-24 | VIA-40 |
| VIA-55 | Connect short semi-continuous unit | 1d | 2026-01-25 | 2026-01-25 | VIA-50 |
| VIA-60 | Install trackform, egress and containment | 2d | 2026-01-26 | 2026-01-27 | VIA-55 |

Notes:
- TRK-10: rail preparation cell; QA hold: material and ultrasonic release
- TRK-20: precast trackform cell; QA hold: concrete strength and insert survey
- TRK-30: track panel fixture; QA hold: fastener identity and torque witness
- TRK-40: track panel fixture; QA hold: gauge, cant and rail-seat survey
- TRK-50: site track installation; QA hold: weld NDT and final geometry release
- STN-10: precast station cell; QA hold: strength, dimensions and lifting points
- STN-20: steel fabrication cell; QA hold: weld/NDT and trial-fit release
- STN-30: station systems cell; QA hold: electrical isolation and water test
- STN-40: station erection site; QA hold: 350 mm platform/rail datum and structural survey
- STN-50: station commissioning; QA hold: integrated passenger and life-safety acceptance
- VIA-05: substructure erection front; QA hold: actual foundation length/cost, representative load-test release, column records and cap seat survey
- VIA-10: decked pi-beam precast yard; QA hold: mould, cage, tendon and insert hold point
- VIA-20: decked pi-beam precast yard; QA hold: strength, maturity and transfer release
- VIA-30: precast QA bay; QA hold: dimensions, camber, cover, NDT and drainage
- VIA-40: controlled transport route; QA hold: route, radius, rigging, wind and ground-bearing release
- VIA-50: portal/short-launcher erection front; QA hold: bearing identity/orientation, synchronization and one-line internal-support survey
- VIA-55: continuity connection front; QA hold: CWR/braking/temperature/seismic/foundation-flexibility analysis and connection fatigue release
- VIA-60: viaduct finishing front; QA hold: track, drainage, earthing and egress release
